# Obergan_EPI_RK1

How a schedule from MS Project changed from version to version. A marks actual dates.

## Version 1 (saved 2021-03-30, file Obergan_EPI_RK1_2.mpp)

Note of the change: Add rk1

| ID | WBS | Task | Duration | Start | Finish | Total float |
| --- | --- | --- | --- | --- | --- | --- |
| 1 |  | Начало проекта | 0d | 2021-04-05 | 2021-04-05 | 20d |
| 2 |  | Установка ПО | 15d | 2021-04-05 | 2021-04-23 | 5d |
| 3 |  | Обучение персонала | 20d | 2021-04-05 | 2021-04-30 | 0d |
| 4 | 4 | **Разработка представительких сайтов** | 5d | 2021-04-05 | 2021-04-09 | 15d |
| 5 |  | Разработка сайта 1 | 5d | 2021-04-05 | 2021-04-09 | 15d |
| 6 |  | Разработка сайта 2 | 5d | 2021-04-05 | 2021-04-09 | 15d |
| 7 |  | Представительские сайты созданы | 0d | 2021-04-05 | 2021-04-05 | 20d |
| 8 | 6 | **Разработка корпоративного сайта** | 15d | 2021-04-05 | 2021-04-23 | 5d |
| 9 |  | Проектирование сайта | 5d | 2021-04-05 | 2021-04-09 | 15d |
| 10 |  | Программирование сайта | 15d | 2021-04-05 | 2021-04-23 | 5d |
| 11 |  | Наполнение сайта | 3d | 2021-04-05 | 2021-04-07 | 17d |
| 12 |  | Тестирование сайта | 5d | 2021-04-05 | 2021-04-09 | 15d |
| 13 |  | Сдача сайта заказчику | 0d | 2021-04-05 | 2021-04-05 | 20d |

## Version 2 (saved 2021-03-30, file Obergan_EPI_RK1_4.mpp)

Note of the change: Add rk1

Last finish 2021-04-30 → 2021-06-24 (+55d).

Changed:

| ID | Task | Start | Finish | Duration | Total float | Predecessors |
| --- | --- | --- | --- | --- | --- | --- |
| 2 | Установка ПО | 2021-04-05 → 2021-04-06 (+1d) | 2021-04-23 → 2021-04-26 (+3d) |  | 5d → 0d | none → 1FS+1d |
| 3 | Обучение персонала | 2021-04-05 → 2021-04-20 (+15d) | 2021-04-30 → 2021-05-19 (+19d) |  |  | none → 2SS+10d |
| 4 | **Разработка представительких сайтов** | 2021-04-05 → 2021-05-20 (+45d) | 2021-04-09 → 2021-05-31 (+52d) | 5d → 8d | 15d → 17d | none → 3 |
| 5 | Разработка сайта 1 | 2021-04-05 → 2021-05-20 (+45d) | 2021-04-09 → 2021-05-26 (+47d) |  | 15d → 17d |  |
| 6 | Разработка сайта 2 | 2021-04-05 → 2021-05-25 (+50d) | 2021-04-09 → 2021-05-31 (+52d) |  | 15d → 17d | none → 5FS-2d |
| 7 | Представительские сайты созданы | 2021-04-05 → 2021-05-31 (+56d) | 2021-04-05 → 2021-05-31 (+56d) |  | 20d → 17d | none → 4 |
| 8 | **Разработка корпоративного сайта** | 2021-04-05 → 2021-05-20 (+45d) | 2021-04-23 → 2021-06-24 (+62d) | 15d → 25d | 5d → 0d | none → 3 |
| 9 | Проектирование сайта | 2021-04-05 → 2021-05-20 (+45d) | 2021-04-09 → 2021-05-26 (+47d) |  | 15d → 0d |  |
| 10 | Программирование сайта | 2021-04-05 → 2021-05-27 (+52d) | 2021-04-23 → 2021-06-17 (+55d) |  | 5d → 0d | none → 9 |
| 11 | Наполнение сайта | 2021-04-05 → 2021-06-15 (+71d) | 2021-04-07 → 2021-06-17 (+71d) |  | 17d → 0d | none → 10FS-3d |
| 12 | Тестирование сайта | 2021-04-05 → 2021-06-18 (+74d) | 2021-04-09 → 2021-06-24 (+76d) |  | 15d → 0d | none → 11 |
| 13 | Сдача сайта заказчику | 2021-04-05 → 2021-06-24 (+80d) | 2021-04-05 → 2021-06-24 (+80d) |  | 20d → 0d | none → 12 |

## Version 3 (saved 2021-03-30, file Obergan_EPI_RK1_6.mpp)

Note of the change: Add rk1

Last finish 2021-06-24 → 2021-07-01 (+7d).

Changed:

| ID | Task | Start | Finish | Duration | Total float | Other |
| --- | --- | --- | --- | --- | --- | --- |
| 2 | Установка ПО |  |  |  |  | resources none → Программное обеспечение; Соломин |
| 3 | Обучение персонала |  | 2021-05-19 → 2021-05-26 (+7d) | 20d → 25d |  | resources none → Бумага [2 шт]; Картриджи для принтера; Кузнецов; Петров; Преподаватели; Соломин; Тимофеев; Яковлева |
| 4 | **Разработка представительких сайтов** | 2021-05-20 → 2021-05-27 (+7d) | 2021-05-31 → 2021-06-09 (+9d) | 8d → 10d | 17d → 15d |  |
| 5 | Разработка сайта 1 | 2021-05-20 → 2021-05-27 (+7d) | 2021-05-26 → 2021-06-02 (+7d) |  | 17d → 15d | resources none → Кузнецов; Тимофеев |
| 6 | Разработка сайта 2 | 2021-05-25 → 2021-06-03 (+9d) | 2021-05-31 → 2021-06-09 (+9d) |  | 17d → 15d | resources none → Кузнецов; Тимофеев |
| 7 | Представительские сайты созданы | 2021-05-31 → 2021-06-09 (+9d) | 2021-05-31 → 2021-06-09 (+9d) |  | 17d → 15d |  |
| 8 | **Разработка корпоративного сайта** | 2021-05-20 → 2021-05-27 (+7d) | 2021-06-24 → 2021-07-01 (+7d) |  |  |  |
| 9 | Проектирование сайта | 2021-05-20 → 2021-05-27 (+7d) | 2021-05-26 → 2021-06-02 (+7d) |  |  | resources none → Петров; Соколов |
| 10 | Программирование сайта | 2021-05-27 → 2021-06-03 (+7d) | 2021-06-17 → 2021-06-24 (+7d) |  |  | resources none → Соломин; Яковлева |
| 11 | Наполнение сайта | 2021-06-15 → 2021-06-22 (+7d) | 2021-06-17 → 2021-06-24 (+7d) |  |  | resources none → Фомина |
| 12 | Тестирование сайта | 2021-06-18 → 2021-06-25 (+7d) | 2021-06-24 → 2021-07-01 (+7d) |  |  | resources none → Соломин; Яковлева |
| 13 | Сдача сайта заказчику | 2021-06-24 → 2021-07-01 (+7d) | 2021-06-24 → 2021-07-01 (+7d) |  |  |  |

## Version 4 (saved 2021-03-30, file Obergan_EPI_RK1_7.mpp)

Note of the change: Add rk1

Last finish 2021-07-01 → 2021-08-16 (+46d).

Added:

| ID | Task | Duration | Start | Finish | Predecessors | Resources |
| --- | --- | --- | --- | --- | --- | --- |
| 6 | Разработка дизайна сайта 1 | 3.2d | 2021-05-27 | 2021-06-07 |  | Кузнецов |
| 7 | Программирование сайта 1 | 2d | 2021-06-15 | 2021-07-05 | 6 | Тимофеев |
| 9 | Разработка дизайна сайта 2 | 5d | 2021-07-16 | 2021-07-30 |  | Кузнецов |
| 10 | Программирование сайта 2 | 2d | 2021-08-13 | 2021-08-16 | 9 | Тимофеев |

Changed:

| ID | Task | Start | Finish | Duration | Total float | Predecessors | Other |
| --- | --- | --- | --- | --- | --- | --- | --- |
| 4 | **Разработка представительких сайтов** |  | 2021-06-09 → 2021-08-16 (+68d) | 10d → 56.2d | 15d → 0d |  |  |
| 5 | **Разработка сайта 1** |  | 2021-06-02 → 2021-07-05 (+33d) | 5d → 25.91d | 15d → 10.2d |  | resources Кузнецов; Тимофеев → none |
| 8 | **Разработка сайта 2** | 2021-06-03 → 2021-07-16 (+43d) | 2021-06-09 → 2021-08-16 (+68d) | 5d → 22d | 15d → 0d | 5FS-2d → 5FS-2d, 6FS-2d, 7FS-2d | resources Кузнецов; Тимофеев → none |
| 11 | Представительские сайты созданы | 2021-06-09 → 2021-08-16 (+68d) | 2021-06-09 → 2021-08-16 (+68d) |  | 15d → 0d |  |  |

## Version 5 (saved 2021-03-30, file Obergan_EPI_RK1_8_2.mpp)

Note of the change: Add rk1

Last finish 2021-08-16 → 2021-10-04 (+49d).

Changed:

| ID | Task | Start | Finish | Duration | Total float | Other |
| --- | --- | --- | --- | --- | --- | --- |
| 2 | Установка ПО |  | 2021-04-26 → 2021-05-12 (+16d) | 15d → 25d | 11d → 11.63d | resources Программное обеспечение; Соломин → Программное обеспечение; Соколов |
| 3 | Обучение персонала |  | 2021-05-26 → 2021-06-21 (+26d) | 25d → 41.11d | 11d → 11.63d | resources Бумага [2 шт]; Картриджи для принтера; Кузнецов; Петров; Преподаватели; Соломин; Тимофеев; Яковлева → Бумага [2 шт]; Картриджи для принтера; Кузнецов; Петров; Преподаватели; Соломин; Тимофеев; Яковлева; Соколов |
| 4 | **Разработка представительких сайтов** | 2021-05-27 → 2021-06-21 (+25d) | 2021-08-16 → 2021-10-04 (+49d) | 56.2d → 75.09d |  |  |
| 5 | **Разработка сайта 1** | 2021-05-27 → 2021-06-21 (+25d) | 2021-07-05 → 2021-08-16 (+42d) | 25.91d → 39.91d | 10.2d → 10.18d |  |
| 6 | Разработка дизайна сайта 1 | 2021-05-27 → 2021-06-21 (+25d) | 2021-06-07 → 2021-07-13 (+36d) |  | 10.2d → 10.83d |  |
| 7 | Программирование сайта 1 | 2021-06-15 → 2021-07-20 (+35d) | 2021-07-05 → 2021-08-16 (+42d) |  | 10.29d → 10.18d |  |
| 8 | **Разработка сайта 2** | 2021-07-16 → 2021-08-27 (+42d) | 2021-08-16 → 2021-10-04 (+49d) | 22d → 27d |  |  |
| 9 | Разработка дизайна сайта 2 | 2021-07-16 → 2021-08-27 (+42d) | 2021-07-30 → 2021-09-10 (+42d) |  |  |  |
| 10 | Программирование сайта 2 | 2021-08-13 → 2021-09-27 (+45d) | 2021-08-16 → 2021-10-04 (+49d) |  |  |  |
| 11 | Представительские сайты созданы | 2021-08-16 → 2021-10-04 (+49d) | 2021-08-16 → 2021-10-04 (+49d) |  |  |  |
| 12 | **Разработка корпоративного сайта** | 2021-05-27 → 2021-06-21 (+25d) | 2021-07-01 → 2021-07-26 (+25d) |  | 32d → 50.89d |  |
| 13 | Проектирование сайта | 2021-05-27 → 2021-06-21 (+25d) | 2021-06-02 → 2021-06-28 (+26d) |  | 32d → 50.89d |  |
| 14 | Программирование сайта | 2021-06-03 → 2021-06-28 (+25d) | 2021-06-24 → 2021-07-19 (+25d) |  | 32d → 50.89d |  |
| 15 | Наполнение сайта | 2021-06-22 → 2021-07-14 (+22d) | 2021-06-24 → 2021-07-19 (+25d) |  | 32d → 50.89d |  |
| 16 | Тестирование сайта | 2021-06-25 → 2021-07-19 (+24d) | 2021-07-01 → 2021-07-26 (+25d) |  | 32d → 50.89d |  |
| 17 | Сдача сайта заказчику | 2021-07-01 → 2021-07-26 (+25d) | 2021-07-01 → 2021-07-26 (+25d) |  | 32d → 50.89d |  |

## Version 6 (saved 2021-03-30, file Obergan_EPI_RK1_8_main.mpp)

Note of the change: Add rk1

Last finish 2021-10-04 → 2021-09-20 (-14d).

Changed:

| ID | Task | Start | Finish | Duration | Total float |
| --- | --- | --- | --- | --- | --- |
| 3 | Обучение персонала |  | 2021-06-21 → 2021-06-01 (-20d) | 41.11d → 28.19d | 11.63d → 10.88d |
| 4 | **Разработка представительких сайтов** | 2021-06-21 → 2021-06-01 (-20d) | 2021-10-04 → 2021-09-20 (-14d) | 75.09d → 78.01d |  |
| 5 | **Разработка сайта 1** | 2021-06-21 → 2021-06-01 (-20d) | 2021-08-16 → 2021-08-02 (-14d) | 39.91d → 42.93d | 10.18d → 10.08d |
| 6 | Разработка дизайна сайта 1 | 2021-06-21 → 2021-06-01 (-20d) | 2021-07-13 → 2021-06-28 (-15d) |  | 10.83d → 10.08d |
| 7 | Программирование сайта 1 | 2021-07-20 → 2021-07-05 (-15d) | 2021-08-16 → 2021-08-02 (-14d) |  | 10.18d → 10.08d |
| 8 | **Разработка сайта 2** | 2021-08-27 → 2021-08-13 (-14d) | 2021-10-04 → 2021-09-20 (-14d) |  |  |
| 9 | Разработка дизайна сайта 2 | 2021-08-27 → 2021-08-13 (-14d) | 2021-09-10 → 2021-08-27 (-14d) |  |  |
| 10 | Программирование сайта 2 | 2021-09-27 → 2021-09-13 (-14d) | 2021-10-04 → 2021-09-20 (-14d) |  |  |
| 11 | Представительские сайты созданы | 2021-10-04 → 2021-09-20 (-14d) | 2021-10-04 → 2021-09-20 (-14d) |  |  |
| 12 | **Разработка корпоративного сайта** | 2021-06-21 → 2021-06-01 (-20d) | 2021-07-26 → 2021-07-07 (-19d) |  | 50.89d → 53.81d |
| 13 | Проектирование сайта | 2021-06-21 → 2021-06-01 (-20d) | 2021-06-28 → 2021-06-08 (-20d) |  | 50.89d → 53.81d |
| 14 | Программирование сайта | 2021-06-28 → 2021-06-08 (-20d) | 2021-07-19 → 2021-06-30 (-19d) |  | 50.89d → 53.81d |
| 15 | Наполнение сайта | 2021-07-14 → 2021-06-25 (-19d) | 2021-07-19 → 2021-06-30 (-19d) |  | 50.89d → 53.81d |
| 16 | Тестирование сайта | 2021-07-19 → 2021-06-30 (-19d) | 2021-07-26 → 2021-07-07 (-19d) |  | 50.89d → 53.81d |
| 17 | Сдача сайта заказчику | 2021-07-26 → 2021-07-07 (-19d) | 2021-07-26 → 2021-07-07 (-19d) |  | 50.89d → 53.81d |

## Version 7 (saved 2021-03-30, file Obergan_EPI_RK1_9_1_no_lining.mpp)

Note of the change: Add rk1

Last finish 2021-09-20 → 2021-06-28 (-84d).

Changed:

| ID | Task | Start | Finish | Duration | Total float |
| --- | --- | --- | --- | --- | --- |
| 3 | Обучение персонала |  | 2021-06-01 → 2021-05-21 (-11d) | 28.19d → 20.69d | 10.88d → 0d |
| 4 | **Разработка представительких сайтов** | 2021-06-01 → 2021-05-21 (-11d) | 2021-09-20 → 2021-06-02 (-110d) | 78.01d → 8d | 0d → 17d |
| 5 | **Разработка сайта 1** | 2021-06-01 → 2021-05-21 (-11d) | 2021-08-02 → 2021-05-28 (-66d) | 42.93d → 5d | 10.08d → 17d |
| 6 | Разработка дизайна сайта 1 | 2021-06-01 → 2021-05-21 (-11d) | 2021-06-28 → 2021-05-26 (-33d) | 3.2d → 3d | 10.08d → 17d |
| 7 | Программирование сайта 1 | 2021-07-05 → 2021-05-26 (-40d) | 2021-08-02 → 2021-05-28 (-66d) |  | 10.08d → 17d |
| 8 | **Разработка сайта 2** | 2021-08-13 → 2021-05-26 (-79d) | 2021-09-20 → 2021-06-02 (-110d) | 27d → 5d | 0d → 17d |
| 9 | Разработка дизайна сайта 2 | 2021-08-13 → 2021-05-26 (-79d) | 2021-08-27 → 2021-05-31 (-88d) | 5d → 3d | 0d → 17d |
| 10 | Программирование сайта 2 | 2021-09-13 → 2021-05-31 (-105d) | 2021-09-20 → 2021-06-02 (-110d) |  | 0d → 17d |
| 11 | Представительские сайты созданы | 2021-09-20 → 2021-06-02 (-110d) | 2021-09-20 → 2021-06-02 (-110d) |  | 0d → 17d |
| 12 | **Разработка корпоративного сайта** | 2021-06-01 → 2021-05-21 (-11d) | 2021-07-07 → 2021-06-28 (-9d) |  | 53.81d → 0d |
| 13 | Проектирование сайта | 2021-06-01 → 2021-05-21 (-11d) | 2021-06-08 → 2021-05-28 (-11d) |  | 53.81d → 0d |
| 14 | Программирование сайта | 2021-06-08 → 2021-05-28 (-11d) | 2021-06-30 → 2021-06-21 (-9d) |  | 53.81d → 0d |
| 15 | Наполнение сайта | 2021-06-25 → 2021-06-16 (-9d) | 2021-06-30 → 2021-06-21 (-9d) |  | 53.81d → 0d |
| 16 | Тестирование сайта | 2021-06-30 → 2021-06-21 (-9d) | 2021-07-07 → 2021-06-28 (-9d) |  | 53.81d → 0d |
| 17 | Сдача сайта заказчику | 2021-07-07 → 2021-06-28 (-9d) | 2021-07-07 → 2021-06-28 (-9d) |  | 53.81d → 0d |

## Version 8 (saved 2021-03-30, file Obergan_EPI_RK1_9_2_good_lining.mpp)

Note of the change: Add rk1

Last finish 2021-06-28 → 2021-07-05 (+7d).

Changed:

| ID | Task | Start | Finish | Duration | Total float |
| --- | --- | --- | --- | --- | --- |
| 3 | Обучение персонала |  | 2021-05-21 → 2021-05-28 (+7d) | 20.69d → 26.31d | 0d → 0.05d |
| 4 | **Разработка представительких сайтов** | 2021-05-21 → 2021-05-28 (+7d) | 2021-06-02 → 2021-07-05 (+33d) | 8d → 25.05d | 17d → 0d |
| 5 | **Разработка сайта 1** | 2021-05-21 → 2021-05-28 (+7d) | 2021-05-28 → 2021-06-21 (+24d) | 5d → 15.05d | 17d → 2.69d |
| 6 | Разработка дизайна сайта 1 | 2021-05-21 → 2021-05-28 (+7d) | 2021-05-26 → 2021-06-07 (+12d) |  | 17d → 4.19d |
| 7 | Программирование сайта 1 | 2021-05-26 → 2021-06-11 (+16d) | 2021-05-28 → 2021-06-21 (+24d) |  | 17d → 2.69d |
| 8 | **Разработка сайта 2** | 2021-05-26 → 2021-06-22 (+27d) | 2021-06-02 → 2021-07-05 (+33d) | 5d → 9.31d | 17d → 0d |
| 9 | Разработка дизайна сайта 2 | 2021-05-26 → 2021-06-22 (+27d) | 2021-05-31 → 2021-06-25 (+25d) |  | 17d → 0d |
| 10 | Программирование сайта 2 | 2021-05-31 → 2021-06-25 (+25d) | 2021-06-02 → 2021-07-05 (+33d) |  | 17d → 0d |
| 11 | Представительские сайты созданы | 2021-06-02 → 2021-07-05 (+33d) | 2021-06-02 → 2021-07-05 (+33d) |  | 17d → 0d |
| 12 | **Разработка корпоративного сайта** | 2021-05-21 → 2021-05-28 (+7d) | 2021-06-28 → 2021-07-05 (+7d) |  | 0d → 0.05d |
| 13 | Проектирование сайта | 2021-05-21 → 2021-05-28 (+7d) | 2021-05-28 → 2021-06-04 (+7d) |  | 0d → 0.05d |
| 14 | Программирование сайта | 2021-05-28 → 2021-06-04 (+7d) | 2021-06-21 → 2021-06-28 (+7d) |  | 0d → 0.05d |
| 15 | Наполнение сайта | 2021-06-16 → 2021-06-23 (+7d) | 2021-06-21 → 2021-06-28 (+7d) |  | 0d → 0.05d |
| 16 | Тестирование сайта | 2021-06-21 → 2021-06-28 (+7d) | 2021-06-28 → 2021-07-05 (+7d) |  | 0d → 0.05d |
| 17 | Сдача сайта заказчику | 2021-06-28 → 2021-07-05 (+7d) | 2021-06-28 → 2021-07-05 (+7d) |  | 0d → 0.05d |

## Version 9 (saved 2021-03-30, file Obergan_EPI_RK1_9_3.mpp)

Note of the change: Add rk1

Last finish 2021-07-05 → 2021-06-29 (-6d).

Changed:

| ID | Task | Start | Finish | Duration | Total float | Other |
| --- | --- | --- | --- | --- | --- | --- |
| 1 | Начало проекта |  |  |  | 0.05d → 0d | baseline start none → 2021-04-05; baseline finish none → 2021-04-05 |
| 2 | Установка ПО |  |  |  | 0.05d → 0d | baseline start none → 2021-04-06; baseline finish none → 2021-05-12 |
| 3 | Обучение персонала |  | 2021-05-28 → 2021-05-24 (-4d) | 26.31d → 22.59d | 0.05d → 0d | resources Бумага [2 шт]; Картриджи для принтера; Кузнецов; Петров; Преподаватели; Соломин; Тимофеев; Яковлева; Соколов → Бумага [2 шт]; Картриджи для принтера; Кузнецов; Петров; Преподаватели; Соломин; Тимофеев; Яковлева; Соколов; Фомина; baseline start none → 2021-04-20; baseline finish none → 2021-05-24 |
| 4 | **Разработка представительких сайтов** | 2021-05-28 → 2021-05-24 (-4d) | 2021-07-05 → 2021-06-28 (-7d) | 25.05d → 24.41d | 0d → 0.59d | baseline start none → 2021-05-24; baseline finish none → 2021-06-28 |
| 5 | **Разработка сайта 1** | 2021-05-28 → 2021-05-24 (-4d) | 2021-06-21 → 2021-06-15 (-6d) | 15.05d → 14.55d | 2.69d → 0.98d | baseline start none → 2021-05-24; baseline finish none → 2021-06-15 |
| 6 | Разработка дизайна сайта 1 | 2021-05-28 → 2021-05-24 (-4d) | 2021-06-07 → 2021-05-31 (-7d) | 3d → 3.29d | 4.19d → 2.98d | resources Кузнецов → Кузнецов; Тимофеев; Фомина; baseline start none → 2021-05-24; baseline finish none → 2021-05-31 |
| 7 | Программирование сайта 1 | 2021-06-11 → 2021-06-04 (-7d) | 2021-06-21 → 2021-06-15 (-6d) |  | 2.69d → 0.98d | baseline start none → 2021-06-04; baseline finish none → 2021-06-15 |
| 8 | **Разработка сайта 2** | 2021-06-22 → 2021-06-10 (-12d) | 2021-07-05 → 2021-06-28 (-7d) | 9.31d → 11.85d | 0d → 0.59d | baseline start none → 2021-06-10; baseline finish none → 2021-06-28 |
| 9 | Разработка дизайна сайта 2 | 2021-06-22 → 2021-06-10 (-12d) | 2021-06-25 → 2021-06-15 (-10d) | 3d → 1.88d | 0d → 0.98d | resources Кузнецов → Кузнецов; Фомина; baseline start none → 2021-06-10; baseline finish none → 2021-06-15 |
| 10 | Программирование сайта 2 |  | 2021-07-05 → 2021-06-28 (-7d) |  | 0d → 0.59d | baseline start none → 2021-06-25; baseline finish none → 2021-06-28 |
| 11 | Представительские сайты созданы | 2021-07-05 → 2021-06-28 (-7d) | 2021-07-05 → 2021-06-28 (-7d) |  | 0d → 0.59d | baseline start none → 2021-06-28; baseline finish none → 2021-06-28 |
| 12 | **Разработка корпоративного сайта** | 2021-05-28 → 2021-05-24 (-4d) | 2021-07-05 → 2021-06-29 (-6d) |  | 0.05d → 0d | baseline start none → 2021-05-24; baseline finish none → 2021-06-29 |
| 13 | Проектирование сайта | 2021-05-28 → 2021-05-24 (-4d) | 2021-06-04 → 2021-05-31 (-4d) |  | 0.05d → 0d | baseline start none → 2021-05-24; baseline finish none → 2021-05-31 |
| 14 | Программирование сайта | 2021-06-04 → 2021-05-31 (-4d) | 2021-06-28 → 2021-06-22 (-6d) |  | 0.05d → 0d | baseline start none → 2021-05-31; baseline finish none → 2021-06-22 |
| 15 | Наполнение сайта | 2021-06-23 → 2021-06-17 (-6d) | 2021-06-28 → 2021-06-22 (-6d) |  | 0.05d → 0d | baseline start none → 2021-06-17; baseline finish none → 2021-06-22 |
| 16 | Тестирование сайта | 2021-06-28 → 2021-06-22 (-6d) | 2021-07-05 → 2021-06-29 (-6d) |  | 0.05d → 0d | baseline start none → 2021-06-22; baseline finish none → 2021-06-29 |
| 17 | Сдача сайта заказчику | 2021-07-05 → 2021-06-29 (-6d) | 2021-07-05 → 2021-06-29 (-6d) |  | 0.05d → 0d | baseline start none → 2021-06-29; baseline finish none → 2021-06-29 |

## Version 10 (data date 2021-06-01, saved 2021-03-30, file Obergan_EPI_RK1_10.mpp)

Note of the change: Add rk1

Last finish 2021-06-29 → 2021-07-07 (+8d). Complete tasks 0 → 4.

Changed:

| ID | Task | Start | Finish | Duration | Complete | Total float |
| --- | --- | --- | --- | --- | --- | --- |
| 1 | Начало проекта | 2021-04-05 A | 2021-04-05 A |  | 0% → 100% | 0d → none |
| 2 | Установка ПО | 2021-04-06 A | 2021-05-12 A |  | 0% → 100% | 0d → none |
| 3 | Обучение персонала | 2021-04-20 A | 2021-05-24 A |  | 0% → 100% | 0d → none |
| 4 | **Разработка представительких сайтов** | 2021-05-24 → 2021-05-31 A (+7d) | 2021-06-28 → 2021-07-05 (+7d) | 24.41d → 25d |  | 0.59d → 2d |
| 5 | **Разработка сайта 1** | 2021-05-24 → 2021-05-31 A (+7d) | 2021-06-15 → 2021-06-21 (+6d) | 14.55d → 14.93d |  | 0.98d → 4d |
| 6 | Разработка дизайна сайта 1 | 2021-05-24 → 2021-05-31 A (+7d) | 2021-05-31 → 2021-06-10 (+10d) | 3.29d → 3.52d |  | 2.98d → 4d |
| 7 | Программирование сайта 1 | 2021-06-04 → 2021-06-11 (+7d) | 2021-06-15 → 2021-06-21 (+6d) |  |  | 0.98d → 4d |
| 8 | **Разработка сайта 2** | 2021-06-10 → 2021-06-17 (+7d) | 2021-06-28 → 2021-07-05 (+7d) | 11.85d → 12.07d |  | 0.59d → 2d |
| 9 | Разработка дизайна сайта 2 | 2021-06-10 → 2021-06-17 (+7d) | 2021-06-15 → 2021-06-21 (+6d) |  |  | 0.98d → 4d |
| 10 | Программирование сайта 2 | 2021-06-25 → 2021-07-02 (+7d) | 2021-06-28 → 2021-07-05 (+7d) |  |  | 0.59d → 2d |
| 11 | Представительские сайты созданы | 2021-06-28 → 2021-07-05 (+7d) | 2021-06-28 → 2021-07-05 (+7d) |  |  | 0.59d → 2d |
| 12 | **Разработка корпоративного сайта** | 2021-05-24 → 2021-05-31 A (+7d) | 2021-06-29 → 2021-07-07 (+8d) | 25d → 27d | 0% → 23% |  |
| 13 | Проектирование сайта | 2021-05-24 → 2021-05-31 A (+7d) | 2021-05-31 → 2021-06-04 (+4d) |  | 0% → 40% | 0d → 7d |
| 14 | Программирование сайта | 2021-05-31 → 2021-06-07 (+7d) | 2021-06-22 → 2021-06-28 (+6d) |  |  | 0d → 7d |
| 15 | Наполнение сайта | 2021-06-17 → 2021-06-24 A (+7d) | 2021-06-22 → 2021-06-30 A (+8d) | 3d → 5d | 0% → 100% | 0d → none |
| 16 | Тестирование сайта | 2021-06-22 → 2021-07-01 (+9d) | 2021-06-29 → 2021-07-07 (+8d) |  |  |  |
| 17 | Сдача сайта заказчику | 2021-06-29 → 2021-07-07 (+8d) | 2021-06-29 → 2021-07-07 (+8d) |  |  |  |
