# LR1_1

How a schedule from MS Project changed from version to version. A marks actual dates.

## Version 1 (data date 2021-05-14, saved 2021-03-26, file LR4_1_added_bad_stuff.mpp)

Note of the change: Add labs 1-5

| ID | WBS | Task | Duration | Start | Finish | Predecessors | Complete | Total float | Constraint |
| --- | --- | --- | --- | --- | --- | --- | --- | --- | --- |
| 1 |  | Начало проекта | 0w | 2021-03-01 09:00 | 2021-03-01 09:00 |  |  | 46.25d |  |
| 2 | 2 | **Создание интерфейса** | 79.72d | 2021-03-01 09:00 A | 2021-06-24 15:44 | 1 |  | 0d |  |
| 3 | 2.1 | **Разработка дизайна интерфейса** | 30.38d | 2021-03-01 09:00 A | 2021-04-13 12:00 |  |  | 41.5d |  |
| 4 |  | Разработка 2D графических элементов | 3w | 2021-03-01 09:00 | 2021-03-23 12:00 |  |  | 4.75d |  |
| 5 |  | Разработка 3D графических элементов | 2w | 2021-03-01 09:00 | 2021-03-16 11:00 | 4SS |  | 4.75d |  |
| 6 |  | Создание заставки | 3w | 2021-03-23 09:00 A | 2021-04-13 12:00 | 5 |  | 41.5d |  |
| 7 |  | Программирование интерфейса | 1.5w | 2021-06-15 10:44 | 2021-06-24 15:44 | 3, 12 |  | 0d |  |
| 8 | 3 | **Построение базы объектов** | 86.85d | 2021-03-23 14:00 A | 2021-07-27 11:46 |  | 30% | 0.15d |  |
| 9 |  | Анализ и построение структуры базы объектов | 3.08w | 2021-03-23 14:00 A | 2021-04-13 18:00 A |  | 100% |  |  |
| 10 |  | Программирование средств обработки базы объектов | 2.05w | 2021-04-15 09:49 A | 2021-04-29 11:46 A | 9 | 100% |  |  |
| 11 |  | Наполнение базы объектов | 12w | 2021-04-29 11:46 | 2021-07-27 11:46 | 10 |  | 0.15d |  |
| 12 | 4 | **Создание ядра GIS** | 72.22d | 2021-03-01 09:00 | 2021-06-15 10:44 |  |  | 0d |  |
| 13 |  | Анализ и проектирование ядра | 1w | 2021-03-01 09:00 | 2021-03-09 10:00 |  |  | 0d |  |
| 14 |  | Создание модели ядра | 2.02w | 2021-03-09 10:00 | 2021-03-23 10:49 | 13 |  | 0d |  |
| 15 |  | Тестирование модели ядра | 0.25w | 2021-03-23 10:49 | 2021-03-24 12:49 | 14 |  | 0d |  |
| 16 |  | Создание рабочей версии ядра | 11.1w | 2021-03-24 12:49 | 2021-06-15 10:44 | 15 |  | 0d |  |
| 17 |  | Создание мультимедиа – наполнения | 6w | 2021-04-13 12:00 | 2021-05-27 18:00 | 3 |  | 41.5d |  |
| 18 |  | Создание справочной системы | 2w | 2021-07-06 09:44 | 2021-07-20 11:44 | 7 |  | 5.16d |  |
| 19 | 7 | **Создание руководства пользователя** | 17.38d | 2021-06-09 15:44 | 2021-07-06 09:44 | 7FS-10d |  | 0d |  |
| 20 |  | Разработка дизайна руководства | 1w | 2021-06-09 15:44 | 2021-06-17 15:44 |  |  | 0d |  |
| 21 |  | Написание руководства пользователя | 3w | 2021-06-11 15:44 | 2021-07-06 09:44 | 20SS+2d |  | 0d |  |
| 22 | 8 | **Создание web – сайта и поддержка** | 23.62d | 2021-06-11 15:44 | 2021-07-16 11:44 |  |  | 0d |  |
| 23 |  | Разработка структуры сайта | 1d | 2021-06-11 15:44 | 2021-06-15 15:44 | 21SS |  | 0d |  |
| 24 |  | Разработка дизайна сайта | 1.45w | 2021-06-15 15:44 | 2021-06-24 17:44 | 23 |  | 0d |  |
| 25 |  | Наполнение сайта | 3w | 2021-06-24 17:44 | 2021-07-16 11:44 | 24 |  | 0d |  |
| 26 |  | Тестирование сайта | 2.43w | 2021-07-09 11:44 | 2021-07-27 14:01 | 22FS-1w |  | 0d |  |
| 27 |  | Сдача сайта в эксплуатацию | 0w | 2021-07-27 14:01 | 2021-07-27 14:01 | 26 |  | 0d |  |
| 28 | 11 | **Совещание** | 96.12d | 2021-03-03 09:00 | 2021-07-21 10:00 |  |  | 0d |  |
| 29 |  | Совещание 1 | 1h | 2021-03-03 09:00 | 2021-03-03 10:00 |  |  |  | start no earlier than 2021-03-03 09:00 |
| 30 |  | Совещание 2 | 1h | 2021-03-10 09:00 | 2021-03-10 10:00 |  |  |  | start no earlier than 2021-03-10 09:00 |
| 31 |  | Совещание 3 | 1h | 2021-03-17 09:00 | 2021-03-17 10:00 |  |  |  | start no earlier than 2021-03-17 09:00 |
| 32 |  | Совещание 4 | 1h | 2021-03-24 09:00 | 2021-03-24 10:00 |  |  |  | start no earlier than 2021-03-24 09:00 |
| 33 |  | Совещание 5 | 1h | 2021-03-31 09:00 | 2021-03-31 10:00 |  |  |  | start no earlier than 2021-03-31 09:00 |
| 34 |  | Совещание 6 | 1h | 2021-04-07 09:00 | 2021-04-07 10:00 |  |  |  | start no earlier than 2021-04-07 09:00 |
| 35 |  | Совещание 7 | 1h | 2021-04-14 09:00 | 2021-04-14 10:00 |  |  |  | start no earlier than 2021-04-14 09:00 |
| 36 |  | Совещание 8 | 1h | 2021-04-21 09:00 | 2021-04-21 10:00 |  |  |  | start no earlier than 2021-04-21 09:00 |
| 37 |  | Совещание 9 | 1h | 2021-04-28 09:00 | 2021-04-28 10:00 |  |  |  | start no earlier than 2021-04-28 09:00 |
| 38 |  | Совещание 10 | 1h | 2021-05-05 09:00 | 2021-05-05 10:00 |  |  |  | start no earlier than 2021-05-05 09:00 |
| 39 |  | Совещание 11 | 1h | 2021-05-12 09:00 | 2021-05-12 10:00 |  |  |  | start no earlier than 2021-05-12 09:00 |
| 40 |  | Совещание 12 | 1h | 2021-05-19 09:00 | 2021-05-19 10:00 |  |  |  | start no earlier than 2021-05-19 09:00 |
| 41 |  | Совещание 13 | 1h | 2021-05-26 09:00 | 2021-05-26 10:00 |  |  |  | start no earlier than 2021-05-26 09:00 |
| 42 |  | Совещание 14 | 1h | 2021-06-02 09:00 | 2021-06-02 10:00 |  |  |  | start no earlier than 2021-06-02 09:00 |
| 43 |  | Совещание 15 | 1h | 2021-06-09 09:00 | 2021-06-09 10:00 |  |  |  | start no earlier than 2021-06-09 09:00 |
| 44 |  | Совещание 16 | 1h | 2021-06-16 09:00 | 2021-06-16 10:00 |  |  |  | start no earlier than 2021-06-16 09:00 |
| 45 |  | Совещание 17 | 1h | 2021-06-23 09:00 | 2021-06-23 10:00 |  |  |  | start no earlier than 2021-06-23 09:00 |
| 46 |  | Совещание 18 | 1h | 2021-06-30 09:00 | 2021-06-30 10:00 |  |  |  | start no earlier than 2021-06-30 09:00 |
| 47 |  | Совещание 19 | 1h | 2021-07-07 09:00 | 2021-07-07 10:00 |  |  |  | start no earlier than 2021-07-07 09:00 |
| 48 |  | Совещание 20 | 1h | 2021-07-14 09:00 | 2021-07-14 10:00 |  |  |  | start no earlier than 2021-07-14 09:00 |
| 49 |  | Совещание 21 | 1h | 2021-07-21 09:00 | 2021-07-21 10:00 |  |  |  | start no earlier than 2021-07-21 09:00 |

## Version 2 (data date 2021-05-14, saved 2021-03-26, file LR4_2.mpp)

Note of the change: Add labs 1-5

Last finish 2021-07-27 → 2021-08-05 (+9d). Complete tasks 2 → 20.

Added:

| ID | Task | Duration | Start | Finish | Constraint | Resources |
| --- | --- | --- | --- | --- | --- | --- |
| 50 | Совещание 22 | 1h | 2021-07-28 09:00 | 2021-07-28 10:00 | start no earlier than 2021-07-28 09:00 | 3D аниматор; Web-дизайнер; Ведущий программист; Мультимедиа-корреспондент; Системный аналитик; Технический писатель; Художник-дизайнер |
| 51 | Совещание 23 | 1h | 2021-08-04 09:00 | 2021-08-04 10:00 | start no earlier than 2021-08-04 09:00 | 3D аниматор; Web-дизайнер; Ведущий программист; Мультимедиа-корреспондент; Системный аналитик; Технический писатель; Художник-дизайнер |

Changed:

| ID | Task | Start | Finish | Duration | Complete | Total float | Other |
| --- | --- | --- | --- | --- | --- | --- | --- |
| 1 | Начало проекта | 2021-03-01 09:00 A | 2021-03-01 09:00 A |  | 0% → 100% | 46.25d → none |  |
| 2 | **Создание интерфейса** |  | 2021-06-24 15:44 → 2021-07-02 14:20 (+8d) | 79.72d → 85.54d | 0% → 84% |  |  |
| 3 | **Разработка дизайна интерфейса** |  | 2021-04-13 12:00 A |  | 0% → 100% | 41.5d → none |  |
| 4 | Разработка 2D графических элементов | 2021-03-01 09:00 A | 2021-03-23 12:00 A |  | 0% → 100% | 4.75d → none |  |
| 5 | Разработка 3D графических элементов | 2021-03-01 09:00 A | 2021-03-16 11:00 A |  | 0% → 100% | 4.75d → none |  |
| 6 | Создание заставки |  | 2021-04-13 12:00 A |  | 0% → 100% | 41.5d → none |  |
| 7 | Программирование интерфейса | 2021-06-15 10:44 → 2021-06-23 09:20 (+8d) | 2021-06-24 15:44 → 2021-07-02 14:20 (+8d) |  |  |  |  |
| 8 | **Построение базы объектов** |  |  |  | 30% → 41% | 0.15d → 7.48d |  |
| 11 | Наполнение базы объектов | 2021-04-29 11:46 A |  |  | 0% → 16% | 0.15d → 7.48d |  |
| 12 | **Создание ядра GIS** | 2021-03-01 09:00 A | 2021-06-15 10:44 → 2021-06-23 09:20 (+8d) | 72.22d → 78.04d | 0% → 65% |  |  |
| 13 | Анализ и проектирование ядра | 2021-03-01 09:00 A | 2021-03-09 10:00 A |  | 0% → 100% | 0d → none |  |
| 14 | Создание модели ядра | 2021-03-09 10:00 A | 2021-03-23 10:49 → 2021-03-29 12:49 A (+6d) | 2.02w → 2.29w | 0% → 100% | 0d → none |  |
| 15 | Тестирование модели ядра | 2021-03-23 10:49 → 2021-03-29 12:49 A (+6d) | 2021-03-24 12:49 → 2021-03-30 15:49 A (+6d) |  | 0% → 100% | 0d → none |  |
| 16 | Создание рабочей версии ядра | 2021-03-24 12:49 → 2021-03-30 15:49 A (+6d) | 2021-06-15 10:44 → 2021-06-23 09:20 (+8d) | 11.1w → 11.41w | 0% → 54% |  |  |
| 17 | Создание мультимедиа – наполнения | 2021-04-13 12:00 A | 2021-05-27 18:00 → 2021-06-08 12:00 (+12d) |  | 0% → 47% | 41.5d → 41.45d |  |
| 18 | Создание справочной системы | 2021-07-06 09:44 → 2021-07-14 09:00 (+8d) | 2021-07-20 11:44 → 2021-07-28 12:00 (+8d) |  |  | 5.16d → 6.45d |  |
| 19 | **Создание руководства пользователя** | 2021-06-09 15:44 → 2021-06-18 14:20 (+9d) | 2021-07-06 09:44 → 2021-07-13 17:20 (+7d) |  |  |  |  |
| 20 | Разработка дизайна руководства | 2021-06-09 15:44 → 2021-06-18 14:20 (+9d) | 2021-06-17 15:44 → 2021-06-25 14:20 (+8d) |  |  |  |  |
| 21 | Написание руководства пользователя | 2021-06-11 15:44 → 2021-06-22 14:20 (+11d) | 2021-07-06 09:44 → 2021-07-13 17:20 (+7d) |  |  |  |  |
| 22 | **Создание web – сайта и поддержка** | 2021-06-11 15:44 → 2021-06-22 14:20 (+11d) | 2021-07-16 11:44 → 2021-07-26 12:20 (+10d) | 23.62d → 23.88d |  |  |  |
| 23 | Разработка структуры сайта | 2021-06-11 15:44 → 2021-06-22 14:20 (+11d) | 2021-06-15 15:44 → 2021-06-23 14:20 (+8d) |  |  |  |  |
| 24 | Разработка дизайна сайта | 2021-06-15 15:44 → 2021-06-23 14:20 (+8d) | 2021-06-24 17:44 → 2021-07-02 16:20 (+8d) |  |  |  |  |
| 25 | Наполнение сайта | 2021-06-24 17:44 → 2021-07-02 16:20 (+8d) | 2021-07-16 11:44 → 2021-07-26 12:20 (+10d) |  |  |  |  |
| 26 | Тестирование сайта | 2021-07-09 11:44 → 2021-07-19 12:20 (+10d) | 2021-07-27 14:01 → 2021-08-05 16:37 (+9d) | 2.43w → 2.68w |  |  |  |
| 27 | Сдача сайта в эксплуатацию | 2021-07-27 14:01 → 2021-08-05 16:37 (+9d) | 2021-07-27 14:01 → 2021-08-05 16:37 (+9d) |  |  |  |  |
| 28 | **Совещание** | 2021-03-03 09:00 A | 2021-07-21 10:00 → 2021-08-04 10:00 (+14d) | 96.12d → 106.12d | 0% → 48% |  |  |
| 29 | Совещание 1 | 2021-03-03 09:00 A | 2021-03-03 10:00 A |  | 0% → 100% |  |  |
| 30 | Совещание 2 | 2021-03-10 09:00 A | 2021-03-10 10:00 A |  | 0% → 100% |  |  |
| 31 | Совещание 3 | 2021-03-17 09:00 A | 2021-03-17 10:00 A |  | 0% → 100% |  |  |
| 32 | Совещание 4 | 2021-03-24 09:00 A | 2021-03-24 10:00 A |  | 0% → 100% |  |  |
| 33 | Совещание 5 | 2021-03-31 09:00 A | 2021-03-31 10:00 A |  | 0% → 100% |  |  |
| 34 | Совещание 6 | 2021-04-07 09:00 A | 2021-04-07 10:00 A |  | 0% → 100% |  |  |
| 35 | Совещание 7 | 2021-04-14 09:00 A | 2021-04-14 10:00 A |  | 0% → 100% |  |  |
| 36 | Совещание 8 | 2021-04-21 09:00 A | 2021-04-21 10:00 A |  | 0% → 100% |  | resources 3D аниматор; Web-дизайнер; Ведущий программист; Мультимедиа-корреспондент; Системный аналитик; Технический писатель; Художник-дизайнер → 3D аниматор; Web-дизайнер; Ведущий программист; Системный аналитик; Технический писатель; Художник-дизайнер |
| 37 | Совещание 9 | 2021-04-28 09:00 A | 2021-04-28 10:00 A |  | 0% → 100% |  |  |
| 38 | Совещание 10 | 2021-05-05 09:00 A | 2021-05-05 10:00 A |  | 0% → 100% |  |  |
| 39 | Совещание 11 | 2021-05-12 09:00 A | 2021-05-12 10:00 A |  | 0% → 100% |  |  |

## Version 3 (data date 2021-05-14, saved 2021-03-27, file LR4_5.mpp)

Note of the change: Add labs 1-5

Last finish 2021-08-05 → 2021-07-27 (-9d).

Removed: 50 Совещание 22; 51 Совещание 23

Changed:

| ID | Task | Start | Finish | Duration | Complete | Total float | Other |
| --- | --- | --- | --- | --- | --- | --- | --- |
| 2 | **Создание интерфейса** |  | 2021-07-02 14:20 → 2021-06-23 15:22 (-9d) | 85.54d → 78.67d |  | 0d → 1.69d |  |
| 7 | Программирование интерфейса | 2021-06-23 09:20 → 2021-06-11 10:22 (-12d) | 2021-07-02 14:20 → 2021-06-23 15:22 (-9d) |  |  | 0d → 1.69d |  |
| 12 | **Создание ядра GIS** |  | 2021-06-23 09:20 → 2021-06-11 10:22 (-12d) | 78.04d → 71.17d | 65% → 72% | 0d → 1.69d |  |
| 16 | Создание рабочей версии ядра |  | 2021-06-23 09:20 → 2021-06-11 10:22 (-12d) | 11.41w → 10.04w | 54% → 62% | 0d → 1.69d | resources Ведущий программист; Программист#1; Программист#2; Программист#3; Программист#4 → Ведущий программист; Программист#1; Программист#2; Программист#3; Программист#4; Программист#5 |
| 18 | Создание справочной системы | 2021-07-14 09:00 → 2021-07-05 09:22 (-9d) | 2021-07-28 12:00 → 2021-07-19 12:22 (-9d) |  |  | 6.45d → 5.93d |  |
| 19 | **Создание руководства пользователя** | 2021-06-18 14:20 → 2021-06-08 15:22 (-10d) | 2021-07-13 17:20 → 2021-07-05 09:22 (-8d) |  |  | 0d → 1.69d |  |
| 20 | Разработка дизайна руководства | 2021-06-18 14:20 → 2021-06-08 15:22 (-10d) | 2021-06-25 14:20 → 2021-06-16 15:22 (-9d) |  |  | 0d → 1.69d |  |
| 21 | Написание руководства пользователя | 2021-06-22 14:20 → 2021-06-10 15:22 (-12d) | 2021-07-13 17:20 → 2021-07-05 09:22 (-8d) |  |  | 0d → 1.69d |  |
| 22 | **Создание web – сайта и поддержка** | 2021-06-22 14:20 → 2021-06-10 15:22 (-12d) | 2021-07-26 12:20 → 2021-07-15 14:22 (-11d) |  |  | 0d → 1.69d |  |
| 23 | Разработка структуры сайта | 2021-06-22 14:20 → 2021-06-10 15:22 (-12d) | 2021-06-23 14:20 → 2021-06-11 15:22 (-12d) |  |  | 0d → 1.69d |  |
| 24 | Разработка дизайна сайта | 2021-06-23 14:20 → 2021-06-11 15:22 (-12d) | 2021-07-02 16:20 → 2021-06-23 17:22 (-9d) | 1.45w → 1.43w |  | 0d → 1.69d |  |
| 25 | Наполнение сайта | 2021-07-02 16:20 → 2021-06-23 17:22 (-9d) | 2021-07-26 12:20 → 2021-07-15 14:22 (-11d) |  |  | 0d → 1.69d |  |
| 26 | Тестирование сайта | 2021-07-19 12:20 → 2021-07-08 14:22 (-11d) | 2021-08-05 16:37 → 2021-07-23 15:15 (-13d) | 2.68w → 2.22w |  | 0d → 1.69d | resources Ведущий программист; Программист#1; Программист#2; Программист#3; Программист#4 → Ведущий программист; Программист#1; Программист#2; Программист#3; Программист#4; Программист#5 |
| 27 | Сдача сайта в эксплуатацию | 2021-08-05 16:37 → 2021-07-23 15:15 (-13d) | 2021-08-05 16:37 → 2021-07-23 15:15 (-13d) |  |  | 0d → 1.69d |  |
| 28 | **Совещание** |  | 2021-08-04 10:00 → 2021-07-21 10:00 (-14d) | 106.12d → 96.12d | 48% → 52% |  |  |
