# LR1_1

How a schedule from MS Project changed from version to version. A marks actual dates.

## Version 1 (data date 2021-05-14, saved 2021-04-08, file LR5_1.mpp)

Note of the change: Add labs 1-5

| ID | WBS | Task | Duration | Start | Finish | Predecessors | Complete | Total float | Constraint |
| --- | --- | --- | --- | --- | --- | --- | --- | --- | --- |
| 1 |  | Начало проекта | 0w | 2021-03-01 09:00 A | 2021-03-01 09:00 A |  | 100% |  |  |
| 2 | 2 | **Создание интерфейса** | 78.52d | 2021-03-01 09:00 A | 2021-06-23 14:11 | 1 | 84% | 2.96d |  |
| 3 | 2.1 | **Разработка дизайна интерфейса** | 30.38d | 2021-03-01 09:00 A | 2021-04-13 12:00 A |  | 100% |  |  |
| 4 |  | Разработка 2D графических элементов | 3w | 2021-03-01 09:00 A | 2021-03-23 12:00 A |  | 100% |  |  |
| 5 |  | Разработка 3D графических элементов | 2w | 2021-03-01 09:00 A | 2021-03-16 11:00 A | 4SS | 100% |  |  |
| 6 |  | Создание заставки | 3w | 2021-03-23 09:00 A | 2021-04-13 12:00 A | 5 | 100% |  |  |
| 7 |  | Программирование интерфейса | 1.5w | 2021-06-11 09:11 | 2021-06-23 14:11 | 3, 12 |  | 2.96d |  |
| 8 | 3 | **Построение базы объектов** | 86.85d | 2021-03-23 14:00 A | 2021-07-27 11:46 |  | 41% | 0d |  |
| 9 |  | Анализ и построение структуры базы объектов | 3.08w | 2021-03-23 14:00 A | 2021-04-13 18:00 A |  | 100% |  |  |
| 10 |  | Программирование средств обработки базы объектов | 2.05w | 2021-04-15 09:49 A | 2021-04-29 11:46 A | 9 | 100% |  |  |
| 11 |  | Наполнение базы объектов | 12w | 2021-04-29 11:46 A | 2021-07-27 11:46 | 10 | 16% | 0d |  |
| 12 | 4 | **Создание ядра GIS** | 71.02d | 2021-03-01 09:00 A | 2021-06-11 09:11 |  | 72% | 2.96d |  |
| 13 |  | Анализ и проектирование ядра | 1w | 2021-03-01 09:00 A | 2021-03-09 10:00 A |  | 100% |  |  |
| 14 |  | Создание модели ядра | 2.29w | 2021-03-09 10:00 A | 2021-03-29 12:49 A | 13 | 100% |  |  |
| 15 |  | Тестирование модели ядра | 0.25w | 2021-03-29 12:49 A | 2021-03-30 15:49 A | 14 | 100% |  |  |
| 16 |  | Создание рабочей версии ядра | 10.01w | 2021-03-30 15:49 A | 2021-06-11 09:11 | 15 | 62% | 2.96d |  |
| 17 |  | Создание мультимедиа – наполнения | 6w | 2021-04-13 12:00 A | 2021-06-08 11:00 | 3 | 47% | 34.1d |  |
| 18 |  | Создание справочной системы | 2w | 2021-07-02 17:11 | 2021-07-19 10:11 | 7 |  | 6.2d |  |
| 19 | 7 | **Создание руководства пользователя** | 17.25d | 2021-06-08 14:11 | 2021-07-02 16:11 | 7FS-10d |  | 2.96d |  |
| 20 |  | Разработка дизайна руководства | 1w | 2021-06-08 14:11 | 2021-06-16 14:11 |  |  | 2.96d |  |
| 21 |  | Написание руководства пользователя | 3w | 2021-06-10 14:11 | 2021-07-02 16:11 | 20SS+2d |  | 2.96d |  |
| 22 | 8 | **Создание web – сайта и поддержка** | 22.9d | 2021-06-10 14:11 | 2021-07-14 12:22 |  |  | 2.96d |  |
| 23 |  | Разработка структуры сайта | 1d | 2021-06-10 14:11 | 2021-06-11 14:11 | 21SS |  | 2.96d |  |
| 24 |  | Разработка дизайна сайта | 1.3w | 2021-06-11 14:11 | 2021-06-23 10:22 | 23 |  | 2.96d |  |
| 25 |  | Наполнение сайта | 3w | 2021-06-23 10:22 | 2021-07-14 12:22 | 24 |  | 2.96d |  |
| 26 |  | Тестирование сайта | 2.19w | 2021-07-07 12:22 | 2021-07-22 12:03 | 22FS-1w |  | 2.96d |  |
| 27 |  | Сдача сайта в эксплуатацию | 0w | 2021-07-22 12:03 | 2021-07-22 12:03 | 26 |  | 2.96d |  |
| 28 | 11 | **Совещание** | 96.12d | 2021-03-03 09:00 A | 2021-07-21 10:00 |  | 52% | 0d |  |
| 29 |  | Совещание 1 | 1h | 2021-03-03 09:00 A | 2021-03-03 10:00 A |  | 100% |  | start no earlier than 2021-03-03 09:00 |
| 30 |  | Совещание 2 | 1h | 2021-03-10 09:00 A | 2021-03-10 10:00 A |  | 100% |  | start no earlier than 2021-03-10 09:00 |
| 31 |  | Совещание 3 | 1h | 2021-03-17 09:00 A | 2021-03-17 10:00 A |  | 100% |  | start no earlier than 2021-03-17 09:00 |
| 32 |  | Совещание 4 | 1h | 2021-03-24 09:00 A | 2021-03-24 10:00 A |  | 100% |  | start no earlier than 2021-03-24 09:00 |
| 33 |  | Совещание 5 | 1h | 2021-03-31 09:00 A | 2021-03-31 10:00 A |  | 100% |  | start no earlier than 2021-03-31 09:00 |
| 34 |  | Совещание 6 | 1h | 2021-04-07 09:00 A | 2021-04-07 10:00 A |  | 100% |  | start no earlier than 2021-04-07 09:00 |
| 35 |  | Совещание 7 | 1h | 2021-04-14 09:00 A | 2021-04-14 10:00 A |  | 100% |  | start no earlier than 2021-04-14 09:00 |
| 36 |  | Совещание 8 | 1h | 2021-04-21 09:00 A | 2021-04-21 10:00 A |  | 100% |  | start no earlier than 2021-04-21 09:00 |
| 37 |  | Совещание 9 | 1h | 2021-04-28 09:00 A | 2021-04-28 10:00 A |  | 100% |  | start no earlier than 2021-04-28 09:00 |
| 38 |  | Совещание 10 | 1h | 2021-05-05 09:00 A | 2021-05-05 10:00 A |  | 100% |  | start no earlier than 2021-05-05 09:00 |
| 39 |  | Совещание 11 | 1h | 2021-05-12 09:00 A | 2021-05-12 10:00 A |  | 100% |  | start no earlier than 2021-05-12 09:00 |
| 40 |  | Совещание 12 | 1h | 2021-05-19 09:00 | 2021-05-19 10:00 |  |  |  | start no earlier than 2021-05-19 09:00 |
| 41 |  | Совещание 13 | 1h | 2021-05-26 09:00 | 2021-05-26 10:00 |  |  |  | start no earlier than 2021-05-26 09:00 |
| 42 |  | Совещание 14 | 1h | 2021-06-02 09:00 | 2021-06-02 10:00 |  |  |  | start no earlier than 2021-06-02 09:00 |
| 43 |  | Совещание 15 | 1h | 2021-06-09 09:00 | 2021-06-09 10:00 |  |  |  | start no earlier than 2021-06-09 09:00 |
| 44 |  | Совещание 16 | 1h | 2021-06-16 09:00 | 2021-06-16 10:00 |  |  |  | start no earlier than 2021-06-16 09:00 |
| 45 |  | Совещание 17 | 1h | 2021-06-23 09:00 | 2021-06-23 10:00 |  |  |  | start no earlier than 2021-06-23 09:00 |
| 46 |  | Совещание 18 | 1h | 2021-06-30 09:00 | 2021-06-30 10:00 |  |  |  | start no earlier than 2021-06-30 09:00 |
| 47 |  | Совещание 19 | 1h | 2021-07-07 09:00 | 2021-07-07 10:00 |  |  |  | start no earlier than 2021-07-07 09:00 |
| 48 |  | Совещание 20 | 1h | 2021-07-14 09:00 | 2021-07-14 10:00 |  |  |  | start no earlier than 2021-07-14 09:00 |
| 49 |  | Совещание 21 | 1h | 2021-07-21 09:00 | 2021-07-21 10:00 |  |  |  | start no earlier than 2021-07-21 09:00 |

## Version 2 (data date 2021-05-14, saved 2021-04-17, file LR5_3_1_reorder.mpp)

Note of the change: Add labs 1-5

Last finish 2021-07-27 → 2021-08-11 (+15d).

Added:

| ID | Task | Duration | Start | Finish | Predecessors |
| --- | --- | --- | --- | --- | --- |
| 2 | **База объектов** | 86.85d | 2021-03-23 14:00 A | 2021-07-27 11:46 |  |
| 6 | **Ядро** | 71.02d | 2021-03-01 09:00 A | 2021-06-11 09:11 |  |
| 11 | **Разработка графических элементов** | 15.38d | 2021-03-01 09:00 A | 2021-03-23 12:00 A |  |
| 14 | **Сайт** | 78.52d | 2021-03-01 09:00 A | 2021-06-23 14:11 |  |
| 19 | **Руководство** | 15d | 2021-06-23 14:11 | 2021-07-14 14:11 | 14 |
| 22 | **Наполнение** | 63.15d | 2021-04-13 12:00 A | 2021-07-14 14:11 |  |

Removed: 2 Создание интерфейса; 3 Разработка дизайна интерфейса; 8 Построение базы объектов; 12 Создание ядра GIS; 19 Создание руководства пользователя; 22 Создание web – сайта и поддержка

Changed:

| ID | Task | Start | Finish | Duration | Total float | Predecessors |
| --- | --- | --- | --- | --- | --- | --- |
| 13 | Разработка 3D графических элементов |  |  |  |  | 12SS → none |
| 15 | Создание заставки |  |  |  |  | 13 → 11 |
| 16 | Разработка структуры сайта | 2021-06-10 14:11 → 2021-03-01 09:00 (-101d) | 2021-06-11 14:11 → 2021-03-01 18:00 (-102d) |  | 2.96d → 73.85d | 21SS → none |
| 17 | Разработка дизайна сайта | 2021-06-11 14:11 → 2021-03-02 09:00 (-101d) | 2021-06-23 10:22 → 2021-03-09 18:00 (-106d) | 1.3w → 1w | 2.96d → 73.85d |  |
| 18 | Программирование интерфейса |  |  |  | 2.96d → 8.82d | Разработка дизайна интерфейса, Создание ядра GIS → 17, 6 |
| 20 | Разработка дизайна руководства | 2021-06-08 14:11 → 2021-06-23 14:11 (+15d) | 2021-06-16 14:11 → 2021-06-30 14:11 (+14d) |  | 2.96d → 29.78d |  |
| 21 | Написание руководства пользователя | 2021-06-10 14:11 → 2021-06-23 14:11 (+13d) | 2021-07-02 16:11 → 2021-07-14 14:11 (+12d) |  | 2.96d → 19.78d | 20SS+2d → none |
| 23 | Создание мультимедиа – наполнения |  | 2021-06-08 11:00 → 2021-06-07 17:00 (-1d) |  | 34.1d → 34.47d | Разработка дизайна интерфейса → none |
| 24 | Создание справочной системы | 2021-07-02 17:11 → 2021-06-23 14:11 (-9d) | 2021-07-19 10:11 → 2021-07-07 14:11 (-12d) |  | 6.2d → 13.82d |  |
| 25 | Наполнение сайта | 2021-06-23 10:22 → 2021-06-23 14:11 | 2021-07-14 12:22 → 2021-07-14 14:11 |  | 2.96d → 8.82d | 17 → 14 |
| 26 | Тестирование сайта | 2021-07-07 12:22 → 2021-07-27 11:46 (+20d) | 2021-07-22 12:03 → 2021-08-11 11:28 (+20d) |  | 2.96d → 0d | Создание web – сайта и поддержкаFS-1w → 22, 2 |
| 27 | Сдача сайта в эксплуатацию | 2021-07-22 12:03 → 2021-08-11 11:28 (+20d) | 2021-07-22 12:03 → 2021-08-11 11:28 (+20d) |  | 2.96d → 0d |  |

## Version 3 (data date 2021-05-14, saved 2021-04-17, file LR5_3_2_final.mpp)

Note of the change: Add labs 1-5

Last finish 2021-08-11 → 2021-08-12 (+1d).

Added:

| ID | Task | Duration | Start | Finish | Constraint | Resources |
| --- | --- | --- | --- | --- | --- | --- |
| 50 | Совещание 22 | 1h | 2021-07-28 09:00 | 2021-07-28 10:00 | start no earlier than 2021-07-28 09:00 | 3D аниматор; Web-дизайнер; Ведущий программист; Мультимедиа-корреспондент; Системный аналитик; Технический писатель; Художник-дизайнер |
| 51 | Совещание 23 | 1h | 2021-08-04 09:00 | 2021-08-04 10:00 | start no earlier than 2021-08-04 09:00 | 3D аниматор; Web-дизайнер; Ведущий программист; Мультимедиа-корреспондент; Системный аналитик; Технический писатель; Художник-дизайнер |
| 52 | Совещание 24 | 1h | 2021-08-11 09:00 | 2021-08-11 10:00 | start no earlier than 2021-08-11 09:00 | 3D аниматор; Web-дизайнер; Ведущий программист; Мультимедиа-корреспондент; Системный аналитик; Технический писатель; Художник-дизайнер |

Changed:

| ID | Task | Start | Finish | Duration | Complete | Total float | Other |
| --- | --- | --- | --- | --- | --- | --- | --- |
| 2 | **База объектов** |  |  |  |  | 0d → 1.68d | resources none → Дополнительный сервер |
| 14 | **Сайт** |  |  |  | 53% → 39% | 8.82d → 0d |  |
| 17 | Разработка дизайна сайта |  | 2021-03-09 18:00 → 2021-04-12 12:00 (+34d) | 1w → 3w |  | 73.85d → 41.65d |  |
| 19 | **Руководство** |  | 2021-07-14 14:11 → 2021-07-26 12:00 (+12d) | 15d → 22.85d |  | 19.78d → 13.61d |  |
| 21 | Написание руководства пользователя | 2021-06-23 14:11 → 2021-07-05 10:00 (+12d) | 2021-07-14 14:11 → 2021-07-26 12:00 (+12d) |  |  | 19.78d → 13.61d |  |
| 22 | **Наполнение** |  | 2021-07-14 14:11 → 2021-07-29 09:11 (+15d) | 63.15d → 73.65d |  | 8.82d → 0d |  |
| 23 | Создание мультимедиа – наполнения |  | 2021-06-07 17:00 → 2021-06-08 11:00 (+1d) |  |  | 34.47d → 35.77d |  |
| 24 | Создание справочной системы |  | 2021-07-07 14:11 → 2021-07-29 09:11 (+22d) |  |  | 13.82d → 0d |  |
| 25 | Наполнение сайта |  | 2021-07-14 14:11 → 2021-07-14 16:11 |  |  | 8.82d → 10.25d |  |
| 26 | Тестирование сайта | 2021-07-27 11:46 → 2021-07-29 09:11 (+2d) | 2021-08-11 11:28 → 2021-08-12 17:52 (+1d) |  |  |  |  |
| 27 | Сдача сайта в эксплуатацию | 2021-08-11 11:28 → 2021-08-12 17:52 (+1d) | 2021-08-11 11:28 → 2021-08-12 17:52 (+1d) |  |  |  |  |
| 28 | **Совещание** |  | 2021-07-21 10:00 → 2021-08-11 10:00 (+21d) | 96.12d → 111.12d | 52% → 46% |  |  |
